# FennecBotPlan

Schedule from MS Project, 2021-04-28 to 2021-07-21, A marks actual dates.

## Calendars

- Standard: Mon-Sun 08:00-12:00, 13:00-17:00. Exceptions (off unless hours are given): 2021-04-28 to 2021-07-21 08:00-12:00, 13:00-17:00.

## Resources

| Resource |
| --- |
| Hien Anh Nguyen Manh |
| Son Khue Nguyen |
| Umut Uzunoglu |
| Lukas Evers |

## Schedule

| ID | WBS | Task | Duration | Start | Finish | Predecessors | Complete | Remaining | Total slack | Free slack | Constraint | Resources | Work | Actual work |
| --- | --- | --- | --- | --- | --- | --- | --- | --- | --- | --- | --- | --- | --- | --- |
| 1 | 1 | **Fennec Bot** | 85d? | 2021-04-28 A | 2021-07-21 |  | 8% | 78.3d? |  |  |  |  | 920h | 168h |
| 2 | 1.1 | Lastenheft liegt vor | 1d | 2021-04-28 A | 2021-04-28 A |  | 100% |  |  |  | must start on 2021-04-28 |  |  |  |
| 3 | 1.2 | **Konzeptphase** | 21d | 2021-04-29 A | 2021-05-19 A | 2 | 100% |  |  |  |  |  | 168h | 168h |
| 4 | 1.2.1 | **Pflichtenheft** | 21d | 2021-04-29 A | 2021-05-19 A |  | 100% |  |  |  |  |  | 168h | 168h |
| 5 | 1.2.1.1 | Use Cases definieren | 14d | 2021-04-29 A | 2021-05-12 A |  | 100% |  |  |  | finish no earlier than 2021-05-12 | Son Khue Nguyen | 112h | 112h |
| 6 | 1.2.1.2 | Workflow erstellen | 7d | 2021-05-13 A | 2021-05-19 A |  | 100% |  |  |  |  | Hien Anh Nguyen Manh | 56h | 56h |
| 7 | 1.3 | **Sprint 1** | 21d | 2021-05-20 | 2021-06-09 | 3 |  |  | 5d | 0d |  |  | 752h |  |
| 8 | 1.3.1 | **Jetson Nano** | 12d | 2021-05-20 | 2021-05-31 | 3 |  |  | 21d |  |  |  | 304h |  |
| 9 | 1.3.1.1 | Linux Einarbeitung | 2d | 2021-05-20 | 2021-05-21 |  |  |  | 21d | 0d |  | Hien Anh Nguyen Manh; Lukas Evers; Son Khue Nguyen; Umut Uzunoglu | 64h |  |
| 10 | 1.3.1.2 | Externen Controller einbinden | 10d | 2021-05-22 | 2021-05-31 | 9 |  |  | 21d | 0d |  | Lukas Evers | 80h |  |
| 11 | 1.3.1.3 | Intel Real Sense integrieren | 4d | 2021-05-22 | 2021-05-25 | 9 |  |  | 36d |  |  | Umut Uzunoglu | 32h |  |
| 12 | 1.3.1.4 | LiDAR Einbindung | 4d | 2021-05-22 | 2021-05-25 | 9 |  |  | 36d |  |  | Lukas Evers | 32h |  |
| 13 | 1.3.1.5 | ROS Melodic Einarbeitung | 2d | 2021-05-22 | 2021-05-23 | 9 |  |  | 34d | 0d |  | Hien Anh Nguyen Manh; Lukas Evers; Son Khue Nguyen; Umut Uzunoglu | 64h |  |
| 14 | 1.3.1.6 | ROS Enviroment einbinden | 4d | 2021-05-24 | 2021-05-27 | 13 |  |  | 34d |  |  | Umut Uzunoglu | 32h |  |
| 15 | 1.3.2 | **3D-Modell** | 16d | 2021-05-20 | 2021-06-04 | 3 |  |  | 5d |  |  |  | 240h |  |
| 16 | 1.3.2.1 | Abmessung vom Racer Bot | 2d | 2021-05-20 | 2021-05-21 |  |  |  | 5d | 0d |  | Lukas Evers | 16h |  |
| 17 | 1.3.2.2 | Erstes 3D Modell erstellen und (drucken) | 14d | 2021-05-22 | 2021-06-04 | 16 |  |  | 5d |  | finish no later than 2021-06-09 | Hien Anh Nguyen Manh; Son Khue Nguyen | 224h |  |
| 18 | 1.3.3 | **Intelligenz** | 17d | 2021-05-24 | 2021-06-09 |  |  |  | 21d |  |  |  | 136h |  |
| 19 | 1.3.3.1 | Autonome Navigation & Umbgebungserkundung | 17d | 2021-05-24 | 2021-06-09 |  |  |  | 21d |  | finish no earlier than 2021-06-09 | Lukas Evers | 136h |  |
| 20 | 1.3.4 | **Jet Racer** | 9d | 2021-06-01 | 2021-06-09 |  |  |  | 21d |  |  |  | 72h |  |
| 21 | 1.3.4.1 | Fahren mit Controller (NVIDIA) | 9d | 2021-06-01 | 2021-06-09 | 10 |  |  | 21d |  |  | Lukas Evers | 72h |  |
| 22 | 1.4 | **Sprint 2** | 21d | 2021-06-10 | 2021-06-30 | 7 |  |  | 21d | 0d |  |  |  |  |
| 23 | 1.4.1 | **Intelligenz** | 21d | 2021-06-10 | 2021-06-30 |  |  |  | 21d |  |  |  |  |  |
| 24 | 1.4.1.1 | Linienerkennung | 11d | 2021-06-10 | 2021-06-20 |  |  |  | 21d | 0d |  |  |  |  |
| 25 | 1.4.1.2 | Ballerkennung | 14d | 2021-06-10 | 2021-06-23 |  |  |  | 28d |  |  |  |  |  |
| 26 | 1.4.1.3 | Torerkennung | 14d | 2021-06-10 | 2021-06-23 |  |  |  | 28d |  |  |  |  |  |
| 27 | 1.4.1.4 | Linie abfahren | 10d | 2021-06-21 | 2021-06-30 | 24 |  |  | 21d |  |  |  |  |  |

| ID | WBS | Task | Duration | Start | Finish | Predecessors | Total slack | Free slack | Constraint | Deadline | Resources | Work |
| --- | --- | --- | --- | --- | --- | --- | --- | --- | --- | --- | --- | --- |
| 28 | 1.4.2 | **3D-Modell** | 21d | 2021-06-10 | 2021-06-30 |  | 21d |  |  |  |  |  |
| 29 | 1.4.2.1 | Chassis Montage | 3d | 2021-06-10 | 2021-06-12 |  | 21d | 0d |  |  |  |  |
| 30 | 1.4.2.2 | Chassis Verbesserungen | 18d | 2021-06-13 | 2021-06-30 | 29 | 21d |  |  |  |  |  |
| 31 | 1.5 | **Sprint 3** | 21d | 2021-07-01 | 2021-07-21 |  | 0d |  |  |  |  |  |
| 32 | 1.5.1 | **Intelligenz** | 21d | 2021-07-01 | 2021-07-21 |  | 0d |  |  |  |  |  |
| 33 | 1.5.1.1 | Ballsuchalgorithmus | 21d | 2021-07-01 | 2021-07-21 |  | 0d |  | start no earlier than 2021-07-01 |  |  |  |
| 34 | 1.5.1.2 | Ballführung | 14d | 2021-07-01 | 2021-07-14 |  | 7d |  | start no earlier than 2021-07-01 |  |  |  |
| 35 | 1.5.1.3 | Hindernis umfahren | 14d | 2021-07-01 | 2021-07-14 |  | 0d |  | start no earlier than 2021-07-01 |  |  |  |
| 36 | 1.5.1.4 | niedrig-priorisierte Funktionen | 7d | 2021-07-15 | 2021-07-21 | 35 | 0d |  |  | 2021-07-21 |  |  |
| 37 | 1.6 | **Qualitätssicherung** | 64d | 2021-04-28 | 2021-06-30 |  | 21d |  |  |  |  |  |
| 38 | 1.6.1 | Testfälle Sprint 1 | 21d | 2021-05-20 | 2021-06-09 | 7FF | 42d |  |  |  |  |  |
| 39 | 1.6.2 | Testfälle Sprint 2 | 21d | 2021-06-10 | 2021-06-30 | 22FF | 21d |  |  |  |  |  |
| 40 | 1.6.3 | Testfälle Sprint 3 | 21d | 2021-04-28 | 2021-05-18 |  | 64d |  |  |  |  |  |
| 41 | 2 | **Projektmanagement** | 84d | 2021-04-29 | 2021-07-21 |  | 0d |  |  |  |  | 168h |
| 42 | 2.1 | Projektplan erstellen | 21d | 2021-04-29 | 2021-05-19 | 2 | 0d |  | finish no later than 2021-05-19 |  | Hien Anh Nguyen Manh | 168h |
| 43 | 2.2 | Projektplan & Sprintplanning Sprint 1 | 21d | 2021-05-20 | 2021-06-09 | 42 | 0d |  | finish no later than 2021-06-09 |  |  |  |
| 44 | 2.3 | Projektplan & Sprintplanning Sprint 2 | 21d | 2021-06-10 | 2021-06-30 | 43 | 0d |  | finish no later than 2021-06-30 |  |  |  |
| 45 | 2.4 | Projektplan & Sprintplanning Sprint 3 | 21d | 2021-07-01 | 2021-07-21 | 44 | 0d |  | finish no later than 2021-07-21 |  |  |  |
